# Projektplan_04

Schedule from MS Project, 2014-06-02 to 2014-09-12.

## Calendars

- Standard: Mon-Fri 08:00-12:00, 13:00-17:00; Sat-Sun off. Exceptions (off unless hours are given): 2014-05-20 to 2014-08-30 (Frei, recurring).

## Resources

| Resource |
| --- |
| David |
| Felix |
| Tobias |
| Lukas |

## Schedule

| ID | WBS | Task | Type | Duration | Start | Finish | Predecessors | Total slack | Free slack | Constraint | Resources | Work | Deliverables |
| --- | --- | --- | --- | --- | --- | --- | --- | --- | --- | --- | --- | --- | --- |
| 1 | 1 | **Wettbewerbsanalyse** |  | 3.83d | 2014-06-02 | 2014-06-12 |  | 4.84d | 0d |  |  | 20.8h |  |
| 2 | 1.1 | Alternativen recherchieren |  | 2d | 2014-06-02 | 2014-06-05 |  | 4.84d | 0d |  | Tobias [50%] | 8h | Wettbewerbsanalyse: Feature Matrix |
| 3 | 1.2 | Mediatheken explorieren |  | 2d | 2014-06-05 | 2014-06-12 | 2 | 4.84d | 0.12d |  | Tobias [50%] | 8h | Wettbewerbsanalyse: Feature Matrix |
| 4 | 1.3 | Einschätzung der Mediatheken |  | 1d | 2014-06-02 | 2014-06-03 |  | 7.72d | 2.88d |  | David [50%] | 4h | Feature Matrix Mediatheken |
| 5 | 1.4 | Featurematrix erstellen |  | 0.2d | 2014-06-12 | 2014-06-12 | 3, 4 | 4.84d | 0d |  | Tobias [50%] | 0.8h |  |
| 6 | 1.5 | Featurematrix abgeschlossen | milestone | 0d | 2014-06-12 | 2014-06-12 | 5 | 4.84d |  |  | Tobias |  |  |
| 7 | 2 | **Mediatheken einbinden** |  | 25.18d | 2014-06-12 | 2014-09-03 | 1 | 0d |  |  |  | 302.67h |  |
| 8 | 2.1 | API's recherchieren |  | 4d | 2014-06-12 | 2014-06-26 |  | 4.67d | 0d |  | David [50%]; Lukas [50%] | 32h | How-To Mediatheken-Einbinden |
| 9 | 2.2 | API's einbinden |  | 2d | 2014-06-26 | 2014-07-01 | 8 | 4.67d | 0d |  | David [50%]; Lukas [50%] | 16h |  |
| 10 | 2.3 | **Suchen in Mediatheken** |  | 14.38d | 2014-07-01 | 2014-08-21 | 9 | 5.3d |  |  |  | 72h |  |
| 11 | 2.3.1 | Exploration der Suchfunktionen der Mediatheken |  | 1d | 2014-07-01 | 2014-07-03 |  | 5.3d | 0d |  | David [50%] | 4h |  |
| 12 | 2.3.2 | Entwicklung Queries |  | 6d | 2014-07-03 | 2014-07-24 | 11 | 5.17d | 0d |  | David [50%] | 24h |  |
| 13 | 2.3.3 | Kombination Suchalgorithmen |  | 5d | 2014-07-24 | 2014-08-07 | 12 | 5.17d | 0d |  | David [50%] | 20h |  |
| 14 | 2.3.4 | Parsen der Ergebnisse |  | 2d | 2014-08-07 | 2014-08-14 | 13 | 5.17d | 0d |  | David [50%] | 8h |  |
| 15 | 2.3.5 | Darstellung der Ergebnisse |  | 2d | 2014-08-14 | 2014-08-21 | 14 | 5.5d | 0d |  | David [50%]; Lukas [50%] | 16h |  |
| 16 | 2.3.6 | Suchen in Mediatheken abgeschlossen | milestone | 0d | 2014-08-21 | 2014-08-21 | 15 | 5.67d |  |  | David |  |  |
| 17 | 2.4 | **Streamen von Mediatheken** |  | 9.75d | 2014-07-01 | 2014-08-05 | 9 | 8.05d | 0d |  |  | 88h |  |
| 18 | 2.4.1 | Streaming |  | 9d | 2014-07-01 | 2014-07-29 |  | 8.05d | 0d |  | Lukas [50%]; David [50%] | 72h |  |
| 19 | 2.4.2 | Dateitypen / Player & Grundlagen |  | 2d | 2014-07-29 | 2014-08-05 | 18 | 8.05d |  |  | Lukas [50%]; David [50%] | 16h |  |
| 20 | 2.5 | Streaming in Seite einbinden |  | 2d | 2014-08-05 | 2014-08-12 | 17 | 8.3d |  |  | Lukas [50%] | 8h |  |
| 21 | 2.6 | **Browsing in Mediatheken** |  | 20.05d | 2014-07-01 | 2014-09-03 | 9 | 0d |  |  |  | 86.67h |  |
| 22 | 2.6.1 | Exploration der IA's der Mediatheken |  | 2.67d | 2014-07-01 | 2014-07-10 | 1 | 4.84d | 0d |  | Tobias [75%] | 16h |  |
| 23 | 2.6.2 | Erstellung geeigneter IA |  | 1.33d | 2014-07-10 | 2014-07-15 | 22 | 4.84d |  |  | Tobias [75%] | 8h |  |
| 24 | 2.6.3 | IA in Datenbank hinterlegen |  | 3d | 2014-07-31 | 2014-08-11 | 23 | 0d |  | as late as possible | Tobias [50%] | 12h |  |
| 25 | 2.6.4 | Mapping der eigenen IA zu den Mediatheken |  | 4d | 2014-08-11 | 2014-08-21 | 24 | 0d |  | as late as possible | Tobias [25%] | 8h |  |
| 26 | 2.6.5 | Entwicklung Queries |  | 5.33d | 2014-08-21 | 2014-09-03 | 25 | 0d |  | as late as possible | Lukas | 42.67h |  |
| 27 | 2.6.6 | Browsing in Mediatheken abgeschlossen | milestone | 0d | 2014-09-03 | 2014-09-03 | 26 | 0d |  |  | Tobias |  |  |

| ID | WBS | Task | Type | Duration | Start | Finish | Predecessors | Total slack | Free slack | Constraint | Resources | Work | Deliverables |
| --- | --- | --- | --- | --- | --- | --- | --- | --- | --- | --- | --- | --- | --- |
| 28 | 3 | **Grundgerüst der Seite** |  | 3.5d | 2014-06-02 | 2014-06-12 |  | 7.62d |  |  |  | 16h |  |
| 29 | 3.1 | Datenbankschema |  | 0.5d | 2014-06-02 | 2014-06-02 |  | 7.62d | 0.25d |  | Lukas [50%] | 2h |  |
| 30 | 3.2 | PHP Framework |  | 2d | 2014-06-03 | 2014-06-09 | 29 | 7.75d | 0d |  | Lukas [50%] | 8h |  |
| 31 | 3.3 | User Login |  | 1.5d | 2014-06-09 | 2014-06-12 | 30 | 31.62d |  |  | Lukas [50%] | 6h |  |
| 32 | 4 | **Interface** |  | 29d | 2014-06-02 | 2014-09-04 |  | 0d |  |  |  | 276h |  |
| 33 | 4.1 | Sketching |  | 2d | 2014-06-02 | 2014-06-05 |  | 0d |  |  | David [50%]; Felix [50%]; Lukas [50%]; Tobias [50%] | 32h |  |
| 34 | 4.2 | UI Entwürfe abgschlossen | milestone | 0d | 2014-06-05 | 2014-06-05 | 33 | 0d |  |  | Tobias |  |  |
| 35 | 4.3 | **Prototyping** |  | 2.12d | 2014-06-05 | 2014-06-16 | 34 | 0d |  |  |  | 40h |  |
| 36 | 4.3.1 | Paper Prototype erstellen |  | 2d | 2014-06-05 | 2014-06-12 |  | 0d |  |  | David [50%]; Felix [50%]; Lukas [50%]; Tobias [50%] | 32h |  |
| 37 | 4.3.2 | Paper Prototype testen |  | 1d | 2014-06-12 | 2014-06-16 | 36 | 0d |  |  | Felix [50%]; Tobias [50%] | 8h |  |
| 38 | 4.4 | **Screendesign** |  | 5.62d | 2014-06-17 | 2014-07-03 | 35 | 0d |  |  |  | 48h |  |
| 39 | 4.4.1 | Screendesign Landing Page |  | 2d | 2014-06-17 | 2014-06-23 |  | 0d |  |  | Felix | 16h |  |
| 40 | 4.4.2 | Screendesign Persönlicher Bereich |  | 2d | 2014-06-23 | 2014-06-26 | 39 | 0d |  |  | Felix | 16h |  |
| 41 | 4.4.3 | Screendesign Sendungsbereich |  | 2d | 2014-06-30 | 2014-07-03 | 40 | 0d |  |  | Felix | 16h |  |
| 42 | 4.4.4 | Screendesign abgeschlossen | milestone | 0d | 2014-07-03 | 2014-07-03 | 41 | 0d |  |  | Felix |  |  |
| 43 | 4.5 | **Technische Umsetzung** |  | 19.12d | 2014-07-03 | 2014-09-04 | 42, 30 | 0d |  |  |  | 92h | HTML Grundgerüst |
| 44 | 4.5.1 | **Dashboard (Startseite)** |  | 8.62d | 2014-07-03 | 2014-08-05 |  | 0d |  |  |  | 52h |  |
| 45 | 4.5.1.1 | Favoriten |  | 2d | 2014-07-03 | 2014-07-10 |  | 0d |  |  | Felix [50%]; Tobias [25%] | 12h |  |
| 46 | 4.5.1.2 | Neue Sendungen |  | 2d | 2014-07-10 | 2014-07-17 | 45 | 0d |  |  | Felix [50%]; Tobias [25%] | 12h |  |
| 47 | 4.5.1.3 | Kategorisierung |  | 2d | 2014-07-17 | 2014-07-22 | 46 | 0d |  |  | Felix [50%]; Tobias [25%] | 12h |  |
| 48 | 4.5.1.4 | Filterung |  | 4d | 2014-07-22 | 2014-08-05 | 47 | 0d |  |  | Felix [50%]; Tobias [25%] | 16h |  |
| 49 | 4.5.1.5 | Grundgerüst der Startseite abgeschlossen | milestone | 0d | 2014-08-05 | 2014-08-05 | 48 | 0d |  | as late as possible | Felix |  |  |
| 50 | 4.5.2 | **Persönlicher Bereich** |  | 19.12d | 2014-07-03 | 2014-09-04 |  | 0d |  |  |  | 40h |  |
| 51 | 4.5.2.1 | Favoritenliste |  | 2d | 2014-07-03 | 2014-07-10 |  | 8.5d | 0.12d |  | Felix [50%] | 8h |  |
| 52 | 4.5.2.2 | Reminder & Abos |  | 2d | 2014-07-10 | 2014-07-17 | 51 | 8.62d | 0d |  | Felix [50%] | 8h |  |
| 53 | 4.5.2.3 | Playlisten |  | 2d | 2014-07-17 | 2014-07-22 | 52 | 8.62d | 0d |  | Felix [50%] | 8h |  |
| 54 | 4.5.2.4 | Merkliste |  | 4d | 2014-07-22 | 2014-08-05 | 53 | 9d |  |  | Felix [50%]; Tobias [25%] | 16h |  |
| 55 | 4.5.2.5 | Grundgerüst des persönlichen Bereichs abgeschlossen | milestone | 0d | 2014-09-04 | 2014-09-04 | 54 | 0d |  | as late as possible | Felix |  |  |

| ID | WBS | Task | Type | Duration | Start | Finish | Predecessors | Total slack | Constraint | Resources | Work | Deliverables |
| --- | --- | --- | --- | --- | --- | --- | --- | --- | --- | --- | --- | --- |
| 56 | 4.6 | **Design-Umsetzung** |  | 7.38d | 2014-08-05 | 2014-08-28 |  | 0d |  |  | 48h | CSS |
| 57 | 4.6.1 | Umsetzung Landing-Page |  | 2d | 2014-08-05 | 2014-08-11 | 49 | 0d |  | Felix [50%]; Tobias [50%] | 16h |  |
| 58 | 4.6.2 | Umsetzung Sendungsbereich |  | 4d | 2014-08-12 | 2014-08-21 | 57 | 0d |  | Felix [50%]; Tobias [25%] | 16h |  |
| 59 | 4.6.3 | Umsetzung Persönlicher Bereich |  | 2d | 2014-08-25 | 2014-08-28 | 58 | 0d |  | Felix [50%]; Tobias | 16h |  |
| 60 | 4.7 | Anpassungen (Design) |  | 1d | 2014-08-28 | 2014-09-01 | 59 | 0d |  | Tobias | 8h |  |
| 61 | 4.8 | Browserspezifische Anpassungen |  | 1d | 2014-09-01 | 2014-09-02 | 60 | 0d |  | Tobias | 8h |  |
| 62 | 4.9 | Interface abgeschlossen | milestone | 0d | 2014-09-04 | 2014-09-04 | 61 | 0d | as late as possible | Tobias |  |  |
| 63 | 5 | **Testing** |  | 6.12d | 2014-09-04 | 2014-09-12 | 7, 32 | 0d |  |  | 135h |  |
| 64 | 5.1 | Softwaretests |  | 2.88d | 2014-09-04 | 2014-09-08 |  | 0d |  | David; Felix; Lukas; Tobias | 71h |  |
| 65 | 5.2 | Usability-Test |  | 3.25d | 2014-09-08 | 2014-09-12 | 64 | 0d |  | David; Felix; Lukas; Tobias | 64h |  |
